# MealMate alfa

Schedule from MS Project, 2023-01-17 to 2023-01-17.

## Calendars

- Standard: Mon-Fri 09:00-13:00, 14:00-18:00; Sat-Sun off.

## Schedule

| ID | WBS | Task | Type | Duration | Start | Finish | Total slack |
| --- | --- | --- | --- | --- | --- | --- | --- |
| 1 | 1 | **Project management** |  | 1d | 2023-01-17 | 2023-01-17 | 0d |
| 2 | 1.1 | Project scope statement | manual | 1d? | 2023-01-17 | 2023-01-17 |  |
| 3 | 1.2 | WBS | manual | 1d? | 2023-01-17 | 2023-01-17 |  |
| 4 | 1.3 | Approved project management plan | manual | 1d? | 2023-01-17 | 2023-01-17 |  |
| 5 | 2 | **Requirements** |  | 1d | 2023-01-17 | 2023-01-17 | 0d |
| 6 | 2.1 | Software architecture document | manual | 1d? | 2023-01-17 | 2023-01-17 |  |
| 7 | 2.2 | **UI Design** |  | 1d | 2023-01-17 | 2023-01-17 | 0d |
| 8 | 2.2.1 | Style definition | manual | 1d? | 2023-01-17 | 2023-01-17 |  |
| 9 | 2.2.2 | Mobile app design | manual | 1d? | 2023-01-17 | 2023-01-17 |  |
| 10 | 3 | **Infrastructure** |  | 1d | 2023-01-17 | 2023-01-17 | 0d |
| 11 | 3.1 | Infrastructure specification | manual | 1d? | 2023-01-17 | 2023-01-17 |  |
| 12 | 3.2 | Infrastructure cost prediction | manual | 1d? | 2023-01-17 | 2023-01-17 |  |
| 13 | 4 | **Back-end** |  | 1d | 2023-01-17 | 2023-01-17 | 0d |
| 14 | 4.1 | Media database | manual | 1d? | 2023-01-17 | 2023-01-17 |  |
| 15 | 4.2 | Client-management system | manual | 1d? | 2023-01-17 | 2023-01-17 |  |
| 16 | 4.3 | Authentication provider | manual | 1d? | 2023-01-17 | 2023-01-17 |  |
| 17 | 4.4 | Application logic implementation | manual | 1d? | 2023-01-17 | 2023-01-17 |  |
| 18 | 5 | **Front-end** |  | 1d | 2023-01-17 | 2023-01-17 | 0d |
| 19 | 5.1 | Home page | manual | 1d? | 2023-01-17 | 2023-01-17 |  |
| 20 | 5.2 | Login page | manual | 1d? | 2023-01-17 | 2023-01-17 |  |
| 21 | 5.3 | Main page | manual | 1d? | 2023-01-17 | 2023-01-17 |  |
| 22 | 6 | **Test** |  | 1d | 2023-01-17 | 2023-01-17 | 0d |
| 23 | 6.1 | Test GUI | manual | 1d? | 2023-01-17 | 2023-01-17 |  |
| 24 | 6.2 | Test App | manual | 1d? | 2023-01-17 | 2023-01-17 |  |

| ID | WBS | Task | Type | Duration | Start | Finish | Total slack |
| --- | --- | --- | --- | --- | --- | --- | --- |
| 25 | 7 | **Deployment** |  | 1d | 2023-01-17 | 2023-01-17 | 0d |
| 26 | 7.1 | Consegna ai prof. | manual | 1d? | 2023-01-17 | 2023-01-17 |  |
| 27 | 7.2 | Pubblicazione su Appstore | manual | 1d? | 2023-01-17 | 2023-01-17 |  |
